# лр 1 задание 4

How a schedule from MS Project changed from version to version. A marks actual dates.

## Version 1 (saved 2022-03-14)

Note of the change: add lab_2

| ID | WBS | Task | Duration | Start | Finish | Predecessors | Total float |
| --- | --- | --- | --- | --- | --- | --- | --- |
| 1 |  | Начало проекта | 0w | 2022-03-01 | 2022-03-01 |  | 70d |
| 2 | 2 | **Создание интерфейса** | 102.5d | 2022-03-01 | 2022-08-01 | 1 | 0d |
| 3 | 2.1 | **Разработка дизайна интерфейса** | 25d | 2022-03-01 | 2022-04-05 |  | 70d |
| 4 |  | Разработка 2D графических элементов | 3w | 2022-03-01 | 2022-03-22 |  | 70d |
| 5 |  | Разработка 3D графических элементов | 2w | 2022-03-01 | 2022-03-15 | 4SS | 70d |
| 6 |  | Создание заставки | 3w | 2022-03-16 | 2022-04-05 | 5 | 70d |
| 7 |  | Программирование интерфейса | 1.5w | 2022-07-21 | 2022-08-01 | 3, 12 | 0d |
| 8 | 3 | **Построение базы объектов** | 77.5d | 2022-03-01 | 2022-06-27 |  | 53d |
| 9 |  | Анализ и построение структуры базы объектов | 2w | 2022-03-01 | 2022-03-15 |  | 53d |
| 10 |  | Программирование средств обработки базы объектов | 1.5w | 2022-03-16 | 2022-03-25 | 9 | 53d |
| 11 |  | Наполнение базы объектов | 12w | 2022-03-25 | 2022-06-27 | 10 | 53d |
| 12 | 4 | **Создание ядра GIS** | 95d | 2022-03-01 | 2022-07-20 |  | 0d |
| 13 |  | Анализ и проектирование ядра | 3w | 2022-03-01 | 2022-03-22 |  | 0d |
| 14 |  | Создание модели ядра | 5w | 2022-03-23 | 2022-04-26 | 13 | 0d |
| 15 |  | Тестирование модели ядра | 1w | 2022-04-27 | 2022-05-06 | 14 | 0d |
| 16 |  | Создание рабочей версии ядра | 10w | 2022-05-11 | 2022-07-20 | 15 | 0d |
| 17 |  | Создание мультимедиа – наполнения | 6w | 2022-04-06 | 2022-05-24 | 3 | 75.5d |
| 18 |  | Создание справочной системы | 2w | 2022-08-01 | 2022-08-15 | 7 | 18d |
| 19 | 7 | **Создание руководства пользователя** | 17d | 2022-07-18 | 2022-08-10 | 7FS-10d | 0d |
| 20 |  | Разработка дизайна руководства | 1w | 2022-07-18 | 2022-07-25 |  | 0d |
| 21 |  | Написание руководства пользователя | 3w | 2022-07-20 | 2022-08-10 | 20SS+2d | 0d |
| 22 | 8 | **Создание web – сайта и поддержка** | 21d | 2022-07-20 | 2022-08-18 |  | 0d |
| 23 |  | Разработка структуры сайта | 1d | 2022-07-20 | 2022-07-21 | 21SS | 0d |
| 24 |  | Разработка дизайна сайта | 1w | 2022-07-21 | 2022-07-28 | 23 | 0d |
| 25 |  | Наполнение сайта | 3w | 2022-07-28 | 2022-08-18 | 24 | 0d |
| 26 |  | Тестирование сайта | 4w | 2022-08-11 | 2022-09-08 | 22FS-1w | 0d |
| 27 |  | Сдача сайта в эксплуатацию | 0w | 2022-09-08 | 2022-09-08 | 26 | 0d |

## Version 2 (saved 2022-03-15)

Note of the change: upd

Last finish stays 2022-09-08.

Changed:

| ID | Task | Finish | Duration | Other |
| --- | --- | --- | --- | --- |
| 7 | Программирование интерфейса |  |  | resources Наборщик данных #3; Наборщик данных #4 → Программист #1; Программист #2 |
| 10 | Программирование средств обработки базы объектов |  |  | resources Наборщик данных #3; Наборщик данных #4 → Программист #3; Программист #4 |
| 20 | Разработка дизайна руководства | 2022-07-25 → 2022-08-08 (+14d) | 1w → 3w | resources Web-дизайнер; Художник-дизайнер; 3D аниматор → Художник-дизайнер |
| 26 | Тестирование сайта |  |  | resources Ведущий программист; Наборщик данных #1; Наборщик данных #2 → Ведущий программист; Программист #1; Программист #2 |
