# Задание1

How a schedule from MS Project changed from version to version. A marks actual dates.

## Version 1 (data date 2022-05-06, saved 2022-04-05, file Задание_1.mpp)

Note of the change: add lab

| ID | WBS | Task | Duration | Start | Finish | Predecessors | Total float | Constraint |
| --- | --- | --- | --- | --- | --- | --- | --- | --- |
| 1 | 1 | **Создание интерфейса** | 79.37d | 2022-03-01 09:00 | 2022-06-27 11:59 |  | 0.97d |  |
| 2 | 1.1 | **Разработка дизайна интерфейса** | 64.62d | 2022-03-01 09:00 | 2022-06-03 15:00 |  | 7.85d |  |
| 3 |  | Разработка 2D графических элементов | 3.75w | 2022-03-01 09:00 | 2022-03-28 11:00 |  | 7.85d |  |
| 4 |  | Разработка 3D графических элементов | 5w | 2022-03-01 09:00 | 2022-04-05 16:00 | 3SS | 7.85d |  |
| 5 |  | Создание заставки | 7.53w | 2022-04-05 16:00 | 2022-06-03 15:00 | 4 | 7.85d |  |
| 6 |  | Программирование интерфейса | 1.5w | 2022-06-15 16:59 | 2022-06-27 11:59 | 2, 11 | 0.97d |  |
| 7 | 2 | **Построение базы объектов** | 87.85d | 2022-03-22 12:00 | 2022-07-29 10:47 |  | 0d |  |
| 8 |  | Анализ и построение структуры базы объектов | 2w | 2022-03-22 12:00 | 2022-04-05 15:00 |  | 0d |  |
| 9 |  | Программирование средств обработки базы объектов | 2.92w | 2022-04-05 15:00 | 2022-04-29 10:47 | 8 | 0d |  |
| 10 |  | Наполнение базы объектов | 12w | 2022-04-29 10:47 | 2022-07-29 10:47 | 9 | 0d |  |
| 11 | 3 | **Создание ядра GIS** | 71.87d | 2022-03-01 09:00 | 2022-06-15 16:59 |  | 0.97d |  |
| 12 |  | Анализ и проектирование ядра | 3w | 2022-03-01 09:00 | 2022-03-22 12:00 |  | 0.97d |  |
| 13 |  | Создание модели ядра | 2.02w | 2022-03-22 12:00 | 2022-04-05 12:49 | 12 | 0.97d |  |
| 14 |  | Тестирование модели ядра | 1w | 2022-04-05 12:49 | 2022-04-19 09:36 | 13 | 0.97d |  |
| 15 |  | Создание рабочей версии ядра | 7.36w | 2022-04-19 09:36 | 2022-06-15 16:59 | 14 | 0.97d |  |
| 16 |  | Создание мультимедиа – наполнения | 6w | 2022-06-03 15:00 | 2022-07-19 12:00 | 2 | 7.85d |  |
| 17 |  | Создание справочной системы | 2w | 2022-07-06 15:59 | 2022-07-20 17:59 | 6 | 6.22d |  |
| 18 | 6 | **Создание руководства пользователя** | 17.38d | 2022-06-10 11:59 | 2022-07-06 15:59 | 6FS-10d | 0.97d |  |
| 19 |  | Разработка дизайна руководства | 1w | 2022-06-10 11:59 | 2022-06-20 12:59 |  | 0.97d |  |
| 20 |  | Написание руководства пользователя | 3w | 2022-06-15 11:59 | 2022-07-06 15:59 | 19SS+2d | 0.97d |  |
| 21 | 7 | **Создание web – сайта и поддержка** | 23.62d | 2022-06-15 11:59 | 2022-07-18 17:59 |  | 0.97d |  |
| 22 |  | Разработка структуры сайта | 1d | 2022-06-15 11:59 | 2022-06-16 11:59 | 20SS | 0.97d |  |
| 23 |  | Разработка дизайна сайта | 1.43w | 2022-06-16 11:59 | 2022-06-27 14:59 | 22 | 0.97d |  |
| 24 |  | Наполнение сайта | 3w | 2022-06-27 14:59 | 2022-07-18 17:59 | 23 | 0.97d |  |
| 25 |  | Тестирование сайта | 2.45w | 2022-07-11 17:59 | 2022-07-28 11:02 | 21FS-1w | 0.97d |  |
| 26 |  | Сдача сайта в эксплуатацию | 0w | 2022-07-28 11:02 | 2022-07-28 11:02 | 25 | 0.97d |  |
| 30 | 10 | **Совещание** | 100.12d | 2022-03-02 09:00 | 2022-07-27 10:00 |  | 0d |  |
| 31 |  | Совещание 1 | 1h | 2022-03-02 09:00 | 2022-03-02 10:00 |  |  | start no earlier than 2022-03-02 09:00 |
| 32 |  | Совещание 2 | 1h | 2022-03-09 09:00 | 2022-03-09 10:00 |  |  | start no earlier than 2022-03-09 09:00 |
| 33 |  | Совещание 3 | 1h | 2022-03-16 09:00 | 2022-03-16 10:00 |  |  | start no earlier than 2022-03-16 09:00 |
| 34 |  | Совещание 4 | 1h | 2022-03-23 09:00 | 2022-03-23 10:00 |  |  | start no earlier than 2022-03-23 09:00 |
| 35 |  | Совещание 5 | 1h | 2022-03-30 09:00 | 2022-03-30 10:00 |  |  | start no earlier than 2022-03-30 09:00 |
| 36 |  | Совещание 6 | 1h | 2022-04-06 09:00 | 2022-04-06 10:00 |  |  | start no earlier than 2022-04-06 09:00 |
| 37 |  | Совещание 7 | 1h | 2022-04-13 09:00 | 2022-04-13 10:00 |  |  | start no earlier than 2022-04-13 09:00 |
| 38 |  | Совещание 8 | 1h | 2022-04-20 09:00 | 2022-04-20 10:00 |  |  | start no earlier than 2022-04-20 09:00 |
| 39 |  | Совещание 9 | 1h | 2022-04-27 09:00 | 2022-04-27 10:00 |  |  | start no earlier than 2022-04-27 09:00 |
| 40 |  | Совещание 10 | 1h | 2022-05-04 09:00 | 2022-05-04 10:00 |  |  | start no earlier than 2022-05-04 09:00 |
| 41 |  | Совещание 11 | 1h | 2022-05-11 09:00 | 2022-05-11 10:00 |  |  | start no earlier than 2022-05-11 09:00 |
| 42 |  | Совещание 12 | 1h | 2022-05-18 09:00 | 2022-05-18 10:00 |  |  | start no earlier than 2022-05-18 09:00 |
| 43 |  | Совещание 13 | 1h | 2022-05-25 09:00 | 2022-05-25 10:00 |  |  | start no earlier than 2022-05-25 09:00 |
| 44 |  | Совещание 14 | 1h | 2022-06-01 09:00 | 2022-06-01 10:00 |  |  | start no earlier than 2022-06-01 09:00 |
| 45 |  | Совещание 15 | 1h | 2022-06-08 09:00 | 2022-06-08 10:00 |  |  | start no earlier than 2022-06-08 09:00 |
| 46 |  | Совещание 16 | 1h | 2022-06-15 09:00 | 2022-06-15 10:00 |  |  | start no earlier than 2022-06-15 09:00 |
| 47 |  | Совещание 17 | 1h | 2022-06-22 09:00 | 2022-06-22 10:00 |  |  | start no earlier than 2022-06-22 09:00 |
| 48 |  | Совещание 18 | 1h | 2022-06-29 09:00 | 2022-06-29 10:00 |  |  | start no earlier than 2022-06-29 09:00 |
| 49 |  | Совещание 19 | 1h | 2022-07-06 09:00 | 2022-07-06 10:00 |  |  | start no earlier than 2022-07-06 09:00 |
| 50 |  | Совещание 20 | 1h | 2022-07-13 09:00 | 2022-07-13 10:00 |  |  | start no earlier than 2022-07-13 09:00 |
| 51 |  | Совещание 21 | 1h | 2022-07-20 09:00 | 2022-07-20 10:00 |  |  | start no earlier than 2022-07-20 09:00 |
| 52 |  | Совещание 22 | 1h | 2022-07-27 09:00 | 2022-07-27 10:00 |  |  | start no earlier than 2022-07-27 09:00 |

## Version 2 (data date 2022-05-06, saved 2022-04-05, file Задание_2.mpp)

Note of the change: add lab

Last finish 2022-07-29 → 2022-08-03 (+5d). Complete tasks 0 → 1.

Changed:

| ID | Task | Start | Finish | Duration | Complete | Total float |
| --- | --- | --- | --- | --- | --- | --- |
| 1 | **Создание интерфейса** | 2022-03-01 09:00 A | 2022-06-27 11:59 → 2022-06-29 12:00 (+2d) | 79.37d → 81.38d | 0% → 35% | 0.97d → 2.5d |
| 2 | **Разработка дизайна интерфейса** | 2022-03-01 09:00 A | 2022-06-03 15:00 → 2022-06-17 17:00 (+14d) | 64.62d → 73.88d | 0% → 38% | 7.85d → 2.05d |
| 4 | Разработка 3D графических элементов | 2022-03-01 09:00 A | 2022-04-05 16:00 → 2022-04-18 18:00 A (+13d) | 5w → 6.97w | 0% → 100% | 7.85d → none |
| 5 | Создание заставки | 2022-04-05 16:00 → 2022-04-19 09:00 (+14d) | 2022-06-03 15:00 → 2022-06-17 17:00 (+14d) |  |  | 7.85d → 2.05d |
| 6 | Программирование интерфейса | 2022-06-15 16:59 → 2022-06-17 17:00 (+2d) | 2022-06-27 11:59 → 2022-06-29 12:00 (+2d) |  |  | 0.97d → 2.5d |
| 16 | Создание мультимедиа – наполнения | 2022-06-03 15:00 → 2022-06-17 17:00 (+14d) | 2022-07-19 12:00 → 2022-08-01 15:00 (+13d) |  |  | 7.85d → 2.05d |
| 17 | Создание справочной системы | 2022-07-06 15:59 → 2022-07-13 12:00 (+7d) | 2022-07-20 17:59 → 2022-07-27 15:00 (+7d) |  |  | 6.22d → 5.05d |
| 18 | **Создание руководства пользователя** | 2022-06-10 11:59 → 2022-06-17 17:00 (+7d) | 2022-07-06 15:59 → 2022-07-13 12:00 (+7d) | 17.38d → 17.5d |  | 0.97d → 0d |
| 19 | Разработка дизайна руководства | 2022-06-10 11:59 → 2022-06-17 17:00 (+7d) | 2022-06-20 12:59 → 2022-06-24 18:00 (+4d) |  |  | 0.97d → 0d |
| 20 | Написание руководства пользователя | 2022-06-15 11:59 → 2022-06-21 17:00 (+6d) | 2022-07-06 15:59 → 2022-07-13 12:00 (+7d) |  |  | 0.97d → 0d |
| 21 | **Создание web – сайта и поддержка** | 2022-06-15 11:59 → 2022-06-21 17:00 (+6d) | 2022-07-18 17:59 → 2022-07-25 13:00 (+7d) |  |  | 0.97d → 0d |
| 22 | Разработка структуры сайта | 2022-06-15 11:59 → 2022-06-21 17:00 (+6d) | 2022-06-16 11:59 → 2022-06-22 18:00 (+6d) |  |  | 0.97d → 0d |
| 23 | Разработка дизайна сайта | 2022-06-16 11:59 → 2022-06-23 09:00 (+7d) | 2022-06-27 14:59 → 2022-07-04 10:00 (+7d) | 1.43w → 1.4w |  | 0.97d → 0d |
| 24 | Наполнение сайта | 2022-06-27 14:59 → 2022-07-04 10:00 (+7d) | 2022-07-18 17:59 → 2022-07-25 13:00 (+7d) |  |  | 0.97d → 0d |
| 25 | Тестирование сайта | 2022-07-11 17:59 → 2022-07-18 14:00 (+7d) | 2022-07-28 11:02 → 2022-08-03 15:25 (+6d) | 2.45w → 2.44w |  | 0.97d → 0d |
| 26 | Сдача сайта в эксплуатацию | 2022-07-28 11:02 → 2022-08-03 15:25 (+6d) | 2022-07-28 11:02 → 2022-08-03 15:25 (+6d) |  |  | 0.97d → 0d |

## Version 3 (data date 2022-05-06, saved 2022-04-05, file Задание_3.mpp)

Note of the change: add lab

Last finish 2022-08-03 → 2022-08-16 (+13d).

Changed:

| ID | Task | Start | Finish | Duration | Total float |
| --- | --- | --- | --- | --- | --- |
| 1 | **Создание интерфейса** |  | 2022-06-29 12:00 → 2022-07-15 10:31 (+16d) | 81.38d → 93.19d | 2.5d → 0d |
| 2 | **Разработка дизайна интерфейса** |  | 2022-06-17 17:00 → 2022-06-16 16:00 (-1d) | 73.88d → 72.75d | 2.05d → 12.49d |
| 5 | Создание заставки |  | 2022-06-17 17:00 → 2022-06-16 16:00 (-1d) |  | 2.05d → 12.49d |
| 6 | Программирование интерфейса | 2022-06-17 17:00 → 2022-07-05 15:31 (+18d) | 2022-06-29 12:00 → 2022-07-15 10:31 (+16d) |  | 2.5d → 0d |
| 7 | **Построение базы объектов** | 2022-03-22 12:00 → 2022-03-01 09:00 (-21d) | 2022-07-29 10:47 → 2022-08-09 15:22 (+11d) | 87.85d → 110.67d | 3.45d → 5.32d |
| 8 | Анализ и построение структуры базы объектов | 2022-03-22 12:00 → 2022-03-01 09:00 (-21d) | 2022-04-05 15:00 → 2022-03-28 18:00 (-8d) | 2w → 20d | 3.45d → 5.32d |
| 9 | Программирование средств обработки базы объектов | 2022-04-05 15:00 → 2022-03-29 09:00 (-7d) | 2022-04-29 10:47 → 2022-05-16 15:22 (+17d) | 2.92w → 3.54w | 3.45d → 5.32d |
| 10 | Наполнение базы объектов | 2022-04-29 10:47 → 2022-05-16 15:22 (+17d) | 2022-07-29 10:47 → 2022-08-09 15:22 (+11d) |  | 3.45d → 5.32d |
| 11 | **Создание ядра GIS** |  | 2022-06-15 16:59 → 2022-07-05 15:31 (+20d) | 71.87d → 85.69d | 4.5d → 0d |
| 12 | Анализ и проектирование ядра |  | 2022-03-22 12:00 → 2022-04-19 12:00 (+28d) | 3w → 6w | 4.5d → 0d |
| 13 | Создание модели ядра | 2022-03-22 12:00 → 2022-04-19 12:00 (+28d) | 2022-04-05 12:49 → 2022-05-05 14:49 (+30d) | 2.02w → 2.05w | 4.5d → 0d |
| 14 | Тестирование модели ядра | 2022-04-05 12:49 → 2022-05-05 14:49 (+30d) | 2022-04-19 09:36 → 2022-05-23 10:36 (+34d) | 1w → 0.96w | 4.5d → 0d |
| 15 | Создание рабочей версии ядра | 2022-04-19 09:36 → 2022-05-23 10:36 (+34d) | 2022-06-15 16:59 → 2022-07-05 15:31 (+20d) | 7.36w → 6.1w | 4.5d → 0d |
| 16 | Создание мультимедиа – наполнения | 2022-06-17 17:00 → 2022-06-16 16:00 (-1d) | 2022-08-01 15:00 → 2022-07-29 13:00 (-3d) |  | 2.05d → 12.49d |
| 17 | Создание справочной системы | 2022-07-13 12:00 → 2022-07-26 14:31 (+13d) | 2022-07-27 15:00 → 2022-08-09 15:31 (+13d) |  | 5.05d → 5.3d |
| 18 | **Создание руководства пользователя** | 2022-06-17 17:00 → 2022-07-01 10:31 (+14d) | 2022-07-13 12:00 → 2022-07-26 14:31 (+13d) | 17.5d → 17.38d |  |
| 19 | Разработка дизайна руководства | 2022-06-17 17:00 → 2022-07-01 10:31 (+14d) | 2022-06-24 18:00 → 2022-07-08 11:31 (+14d) |  |  |
| 20 | Написание руководства пользователя | 2022-06-21 17:00 → 2022-07-05 10:31 (+14d) | 2022-07-13 12:00 → 2022-07-26 14:31 (+13d) |  |  |
| 21 | **Создание web – сайта и поддержка** | 2022-06-21 17:00 → 2022-07-05 10:31 (+14d) | 2022-07-25 13:00 → 2022-08-05 16:31 (+11d) |  |  |
| 22 | Разработка структуры сайта | 2022-06-21 17:00 → 2022-07-05 10:31 (+14d) | 2022-06-22 18:00 → 2022-07-06 11:31 (+14d) |  |  |
| 23 | Разработка дизайна сайта | 2022-06-23 09:00 → 2022-07-06 11:31 (+13d) | 2022-07-04 10:00 → 2022-07-15 14:31 (+11d) | 1.4w → 1.45w |  |
| 24 | Наполнение сайта | 2022-07-04 10:00 → 2022-07-15 14:31 (+11d) | 2022-07-25 13:00 → 2022-08-05 16:31 (+11d) |  |  |
| 25 | Тестирование сайта | 2022-07-18 14:00 → 2022-07-29 16:31 (+11d) | 2022-08-03 15:25 → 2022-08-16 17:56 (+13d) |  |  |
| 26 | Сдача сайта в эксплуатацию | 2022-08-03 15:25 → 2022-08-16 17:56 (+13d) | 2022-08-03 15:25 → 2022-08-16 17:56 (+13d) |  |  |

## Version 4 (data date 2022-05-06, saved 2022-04-05, file Задание_4.mpp)

Note of the change: add lab

Last finish stays 2022-08-16.

Changed:

| ID | Task | Start | Complete |
| --- | --- | --- | --- |
| 16 | Создание мультимедиа – наполнения | 2022-06-16 16:00 A | 0% → 30% |

## Version 5 (data date 2022-05-06, saved 2022-04-05, file Задание_6.mpp)

Note of the change: add lab

Last finish stays 2022-08-16.

Added:

| ID | Task | Duration | Start | Finish | Constraint | Resources |
| --- | --- | --- | --- | --- | --- | --- |
| 27 | Повышение квалификации | 2w | 2022-04-04 09:00 | 2022-04-15 18:00 | start no earlier than 2022-04-04 09:00 | Программист#1 [50%]; Программист#2 [50%]; Программист#3 [50%]; Программист#4 [50%]; Преподаватель [50%] |

Changed:

| ID | Task | Duration |
| --- | --- | --- |
| 9 | Программирование средств обработки базы объектов | 3.54w → 2.84w |

## Version 6 (data date 2022-05-06, saved 2022-04-21, file Задание_2.mpp)

Note of the change: сдано

Last finish 2022-08-16 → 2022-08-03 (-13d). Complete tasks 1 → 2.

Removed: 27 Повышение квалификации

Changed:

| ID | Task | Start | Finish | Duration | Complete | Total float |
| --- | --- | --- | --- | --- | --- | --- |
| 1 | **Создание интерфейса** |  | 2022-07-15 10:31 → 2022-06-29 12:00 (-16d) | 93.19d → 81.38d |  | 0d → 2.5d |
| 2 | **Разработка дизайна интерфейса** |  | 2022-06-16 16:00 → 2022-06-17 17:00 (+1d) | 72.75d → 73.88d |  | 9.25d → 2.05d |
| 5 | Создание заставки |  | 2022-06-16 16:00 → 2022-06-17 17:00 (+1d) |  |  | 9.25d → 2.05d |
| 6 | Программирование интерфейса | 2022-07-05 15:31 → 2022-06-17 17:00 (-18d) | 2022-07-15 10:31 → 2022-06-29 12:00 (-16d) |  |  | 0d → 2.5d |
| 7 | **Построение базы объектов** | 2022-03-01 09:00 → 2022-03-22 12:00 A (+21d) | 2022-08-09 15:22 → 2022-07-29 10:47 (-11d) | 110.67d → 87.85d | 0% → 12% | 5.32d → 3.45d |
| 8 | Анализ и построение структуры базы объектов | 2022-03-01 09:00 → 2022-03-22 12:00 A (+21d) | 2022-03-28 18:00 → 2022-04-05 15:00 A (+8d) | 20d → 2w | 0% → 100% | 5.32d → none |
| 9 | Программирование средств обработки базы объектов | 2022-03-29 09:00 → 2022-04-05 15:00 (+7d) | 2022-05-16 15:22 → 2022-04-29 10:47 (-17d) | 2.84w → 2.92w |  | 5.32d → 3.45d |
| 10 | Наполнение базы объектов | 2022-05-16 15:22 → 2022-04-29 10:47 (-17d) | 2022-08-09 15:22 → 2022-07-29 10:47 (-11d) |  |  | 5.32d → 3.45d |
| 11 | **Создание ядра GIS** |  | 2022-07-05 15:31 → 2022-06-15 16:59 (-20d) | 85.69d → 71.87d |  | 0d → 4.5d |
| 12 | Анализ и проектирование ядра |  | 2022-04-19 12:00 → 2022-03-22 12:00 (-28d) | 6w → 3w |  | 0d → 4.5d |
| 13 | Создание модели ядра | 2022-04-19 12:00 → 2022-03-22 12:00 (-28d) | 2022-05-05 14:49 → 2022-04-05 12:49 (-30d) | 2.05w → 2.02w |  | 0d → 4.5d |
| 14 | Тестирование модели ядра | 2022-05-05 14:49 → 2022-04-05 12:49 (-30d) | 2022-05-23 10:36 → 2022-04-19 09:36 (-34d) | 0.96w → 1w |  | 0d → 4.5d |
| 15 | Создание рабочей версии ядра | 2022-05-23 10:36 → 2022-04-19 09:36 (-34d) | 2022-07-05 15:31 → 2022-06-15 16:59 (-20d) | 6.1w → 7.36w |  | 0d → 4.5d |
| 16 | Создание мультимедиа – наполнения | 2022-06-16 16:00 A → 2022-06-17 17:00 (+1d) | 2022-07-29 13:00 → 2022-08-01 15:00 (+3d) |  | 30% → 0% | 12.49d → 2.05d |
| 17 | Создание справочной системы | 2022-07-26 14:31 → 2022-07-13 12:00 (-13d) | 2022-08-09 15:31 → 2022-07-27 15:00 (-13d) |  |  | 5.3d → 5.05d |
| 18 | **Создание руководства пользователя** | 2022-07-01 10:31 → 2022-06-17 17:00 (-14d) | 2022-07-26 14:31 → 2022-07-13 12:00 (-13d) | 17.38d → 17.5d |  |  |
| 19 | Разработка дизайна руководства | 2022-07-01 10:31 → 2022-06-17 17:00 (-14d) | 2022-07-08 11:31 → 2022-06-24 18:00 (-14d) |  |  |  |
| 20 | Написание руководства пользователя | 2022-07-05 10:31 → 2022-06-21 17:00 (-14d) | 2022-07-26 14:31 → 2022-07-13 12:00 (-13d) |  |  |  |
| 21 | **Создание web – сайта и поддержка** | 2022-07-05 10:31 → 2022-06-21 17:00 (-14d) | 2022-08-05 16:31 → 2022-07-25 13:00 (-11d) |  |  |  |
| 22 | Разработка структуры сайта | 2022-07-05 10:31 → 2022-06-21 17:00 (-14d) | 2022-07-06 11:31 → 2022-06-22 18:00 (-14d) |  |  |  |
| 23 | Разработка дизайна сайта | 2022-07-06 11:31 → 2022-06-23 09:00 (-13d) | 2022-07-15 14:31 → 2022-07-04 10:00 (-11d) | 1.45w → 1.4w |  |  |
| 24 | Наполнение сайта | 2022-07-15 14:31 → 2022-07-04 10:00 (-11d) | 2022-08-05 16:31 → 2022-07-25 13:00 (-11d) |  |  |  |
| 25 | Тестирование сайта | 2022-07-29 16:31 → 2022-07-18 14:00 (-11d) | 2022-08-16 17:56 → 2022-08-03 15:25 (-13d) |  |  |  |
| 26 | Сдача сайта в эксплуатацию | 2022-08-16 17:56 → 2022-08-03 15:25 (-13d) | 2022-08-16 17:56 → 2022-08-03 15:25 (-13d) |  |  |  |
